How a schedule from MS Project changed from version to version. A marks actual dates.

## Version 1 (saved 2013-05-01)

Note of the change: Paso 7

| ID | WBS | Task | Duration | Start | Finish | Predecessors | Total float |
| --- | --- | --- | --- | --- | --- | --- | --- |
| 1 | 1 | **TOTAL PROYECTO** | 242d | 2013-03-22 | 2014-02-24 |  | 0d |
| 2 | 1.1 | **FASE 1: PREPARACION PARA LA FORMULACION** | 31d | 2013-03-22 | 2013-05-03 |  | 0d |
| 3 |  | INICIO | 0d | 2013-03-22 | 2013-03-22 |  | 0d |
| 4 |  | TERMINOS DE REFERENCIA. Objetivos. Condicionantes del Promotor | 10d | 2013-03-22 | 2013-04-04 | 3 | 5d |
| 5 |  | FINANCIACION | 7d | 2013-03-22 | 2013-04-01 | 3 | 8d |
| 6 |  | COMITÉ DE COORDINACION. Constitución y organización | 5d | 2013-03-22 | 2013-03-28 | 3 | 0d |
| 7 |  | EQUIPO DE FORMULACION. Recursos humanos y técnicos | 15d | 2013-03-29 | 2013-04-18 | 4SS, 6 | 0d |
| 8 |  | METODOLOGIA Y PLAN DE TRABAJO | 10d | 2013-04-12 | 2013-04-25 | 7FS-5d, 5, 4, 6SS | 0d |
| 9 |  | DOC. Nº1: Fin P.F. | 5d | 2013-04-26 | 2013-05-02 | 8 | 0d |
| 10 |  | Entrega al PROMOTOR. Doc. nº1 | 0d | 2013-05-02 | 2013-05-02 | 9 | 0d |
| 11 |  | SEMINARIO DE LANZAMIENTO DEL PROYECTO | 1d | 2013-05-03 | 2013-05-03 | 10 | 0d |
| 12 | 1.2 | **FASE 2: ANALISIS Y DIAGNOSTICO** | 94d | 2013-05-06 | 2013-09-12 |  | 0d |
| 13 | 1.2.1 | **ANALISIS ANTECEDENTES** | 15d | 2013-05-06 | 2013-05-24 | 11 | 0d |
| 14 |  | POLITICAS Y PROGRAMAS | 10d | 2013-05-06 | 2013-05-17 | 11 | 176d |
| 15 |  | MARCO LEGAL | 15d | 2013-05-06 | 2013-05-24 | 11 | 171d |
| 16 |  | BASES DE DATOS EXISTENTES | 7d | 2013-05-06 | 2013-05-14 | 11 | 0d |
| 17 | 1.2.2 | **ANALISIS DEL AREA DEL PROYECTO** | 80d | 2013-05-15 | 2013-09-03 | 11, 16 | 0d |
| 18 |  | ANALISIS DE RECURSOS NATURALES. INVENTARIO AMBIENTAL | 35d | 2013-05-15 | 2013-07-02 |  | 124d |
| 19 |  | INFRAESTRUCTURAS Y SERVICIOS | 20d | 2013-07-03 | 2013-07-30 | 18 | 124d |
| 20 |  | ANALISIS DE SECTORES PRODUCTIVOS | 25d | 2013-07-31 | 2013-09-03 | 14, 15, 19 | 124d |
| 21 |  | ANALISIS POBLACIONAL | 20d | 2013-05-15 | 2013-06-11 |  | 184d |
| 22 |  | SISTEMA GENERAL TERRITORIAL DE INFORMACION | 21d | 2013-05-15 | 2013-06-12 | 16 | 0d |
| 23 | 1.2.3 | **ANALISIS DE AGENTES Y PARTICIPACION** | 82d | 2013-05-22 | 2013-09-12 |  | 0d |
| 24 |  | IDENTIFICACIÓN DE AGENTES Y TIPOLOGIA | 10d | 2013-05-22 | 2013-06-04 | 22SS+5d | 0d |
| 25 |  | ANALISIS DE LA PARTICIPACIÓN: ENCUESTA CON LOS AGENTES | 60d | 2013-06-05 | 2013-08-27 | 24 | 0d |
| 26 |  | TALLER DE PARTICIPACIÓN AGENTES PUBLICOS | 1d | 2013-06-19 | 2013-06-19 | 25SS+10d | 43d |
| 27 |  | ANALISIS PROYECTIVO "SIN" | 6d | 2013-06-20 | 2013-06-27 | 26 | 43d |
| 28 |  | INFORME DE PARTICIPACION: Problemas, necesidades, oportunidades | 10d | 2013-08-28 | 2013-09-10 | 27, 25 | 0d |
| 29 |  | PRESENTACIÓN Y VALIDACION DE CONCLUSIONES | 2d | 2013-09-11 | 2013-09-12 | 28 | 0d |
| 30 |  | CONCLUSIONES Y Doc. Nº2. Presentación al PROMOTOR | 0d | 2013-09-12 | 2013-09-12 | 29 | 0d |
| 31 |  | Doc. nº2. REVISIÓN POR EL PROMOTOR | 0d | 2013-09-12 | 2013-09-12 | 29, 30 | 0d |
| 32 | 1.3 | **FASE 3: DISEÑO DEL PROYECTO** | 92d | 2013-09-13 | 2014-01-20 |  | 0d |
| 33 |  | OBJETIVOS Y METAS | 1d | 2013-09-13 | 2013-09-13 | 31 | 0d |
| 34 |  | ALTERNATIVA ESTRATEGICAS: ANÁLISIS Y SELECCIÓN | 7d | 2013-09-16 | 2013-09-24 | 33 | 0d |
| 35 |  | FORMULACION DE LOS COMPONENTES | 60d | 2013-09-25 | 2013-12-17 | 34 | 0d |
| 36 |  | DISEÑO DE LA ORGANIZACIÓN | 10d | 2013-12-18 | 2013-12-31 | 35 | 0d |
| 37 |  | SISTEMA DE SEGUIMIENTO Y EVALUACION. Programación de la ejecución | 7d | 2014-01-01 | 2014-01-09 | 36, 35 | 32d |
| 38 |  | PRESUPUESTACION | 4d | 2014-01-01 | 2014-01-06 | 35, 36 | 0d |
| 39 |  | Doc. Nº 3. Entrega al PROMOTOR | 0d | 2014-01-06 | 2014-01-06 | 38 | 0d |
| 40 |  | Doc. Nº 3. REVISION POR EL PROMOTOR | 10d | 2014-01-07 | 2014-01-20 | 39 | 0d |
| 41 | 1.4 | **FASE 4: EVALUACION MULTICRITERIO** | 15d | 2014-01-21 | 2014-02-10 |  | 0d |
| 42 |  | EVALUACION ECONOMICO-FINANCIERA | 10d | 2014-01-21 | 2014-02-03 | 40 | 0d |
| 43 |  | EVALUACION SOCIAL Y CULTURAL | 10d | 2014-01-21 | 2014-02-03 | 40 | 0d |
| 44 |  | EVALUACION AMBIENTAL | 10d | 2014-01-21 | 2014-02-03 | 40 | 0d |
| 45 |  | EVALUACION DE RIESGOS, SEGURIDAD Y SALUD DEL PROYECTO | 10d | 2014-01-21 | 2014-02-03 | 40 | 15d |
| 46 |  | Entrega Doc. nº 4. VIABILIDAD Y SOSTENIBLIDAD | 0d | 2014-02-03 | 2014-02-03 | 45 | 15d |
| 47 |  | Revisión Doc. nº 4 | 5d | 2014-02-04 | 2014-02-10 | 42, 43, 44 | 0d |
| 48 | 1.5 | **FASE 5: DOCUMENTACION** | 10d | 2014-02-11 | 2014-02-24 |  | 0d |
| 49 |  | MEMORIA | 6d | 2014-02-11 | 2014-02-18 | 47 | 4d |
| 50 |  | ANEJOS A LA MEMORIA | 10d | 2014-02-11 | 2014-02-24 | 47 | 0d |
| 51 |  | PLANOS | 10d | 2014-02-11 | 2014-02-24 | 47 | 0d |
| 52 |  | PLIEGO DE CONDICIONES | 3d | 2014-02-11 | 2014-02-13 | 47 | 7d |
| 53 |  | PRESUPUESTO | 3d | 2014-02-11 | 2014-02-13 | 47 | 7d |
| 54 |  | ESTUDIO DE SEGURIDAD Y SALUD | 10d | 2014-02-11 | 2014-02-24 | 47 | 0d |
| 55 |  | Entrega del proyecto | 0d | 2014-02-24 | 2014-02-24 | 54, 49, 50, 51, 52, 53 | 0d |

## Version 2 (saved 2013-05-01)

Note of the change: Paso 5 6 7 8

Last finish stays 2014-02-24.

Changed:

| ID | Task | Other |
| --- | --- | --- |
| 4 | TERMINOS DE REFERENCIA. Objetivos. Condicionantes del Promotor | resources DIRECTOR PROYECTO [25%]; INGENIERO AGRONOMO [25%]; SOCIOLOGO [25%]; INGENIERO EN MEDIOAMBIENTE [25%]; ECONOMISTA [50%]; TECNICOS DE APOYO → DIRECTOR PROYECTO [25%]; INGENIERO AGRONOMO [25%]; SOCIOLOGO [25%]; INGENIERO EN MEDIOAMBIENTE [25%]; ECONOMISTA [50%] |
